# InventaPro

Schedule from MS Project, 2024-08-13 to 2024-12-12, status date 2024-12-10, costs in $, A marks actual dates.

## Calendars

- calendario de trabajo: Mon-Sat 08:00-13:00, 14:00-19:00; Sun off.

## Resources

| Resource | Rate |
| --- | --- |
| Luis Navarrete | 9000 |
| Julio Navarro | 6000 |
| Cristopher Flores | 8000 |
| Dominio | 10000 |
| Internet | 40000 |
| Servidores | 44000 |
| QA | 8500 |

## Schedule

| ID | WBS | Task | Type | Duration | Start | Finish | Predecessors | Complete | Actual finish | Baseline start | Baseline finish | Baseline duration | Constraint | Resources | Work | Actual work | Cost | Baseline cost | Actual cost |
| --- | --- | --- | --- | --- | --- | --- | --- | --- | --- | --- | --- | --- | --- | --- | --- | --- | --- | --- | --- |
| 1 | 1 | **InventaPro** |  | 131.12d | 2024-08-13 A | 2024-12-12 |  | 100% | 2024-12-03 | 2024-08-13 | 2024-12-12 | 131.12d |  |  | 1196h | 1196h | 9,239,000 | 8,432,000 | 9,239,000 |
| 2 | 1.1 | Inicio | milestone | 0d | 2024-08-13 A | 2024-08-13 A |  | 100% |  | 2024-08-13 | 2024-08-13 | 0d |  |  |  |  |  |  |  |
| 3 | 1.2 | **Fase 1 Definición Proyecto** |  | 23.5d | 2024-08-13 A | 2024-09-03 A |  | 100% |  | 2024-08-13 | 2024-09-03 | 23.5d |  |  | 88h | 88h | 608,000 | 608,000 | 608,000 |
| 4 | 1.2.1 | Conformación del Equipo |  | 1d | 2024-08-13 A | 2024-08-13 A | 2 | 100% |  | 2024-08-13 | 2024-08-13 | 1d |  |  |  |  |  |  |  |
| 5 | 1.2.2 | Selección del Proyecto |  | 2d | 2024-08-19 A | 2024-08-20 A | 4 | 100% |  | 2024-08-19 | 2024-08-20 | 2d | start no earlier than 2024-08-19 | Cristopher Flores; Julio Navarro; Luis Navarrete | 48h | 48h | 368,000 | 368,000 | 368,000 |
| 6 | 1.2.3 | **Definición del Proyecto** |  | 4d | 2024-08-20 A | 2024-08-23 A |  | 100% |  | 2024-08-20 | 2024-08-23 | 4d |  |  | 32h | 32h | 192,000 | 192,000 | 192,000 |
| 7 | 1.2.3.1 | 1.5_GuiaEstudiante_Fase 1_Definicion Proyecto APT |  | 4d | 2024-08-20 A | 2024-08-23 A | 5 | 100% |  | 2024-08-20 | 2024-08-23 | 4d |  | Julio Navarro | 32h | 32h | 192,000 | 192,000 | 192,000 |
| 8 | 1.2.4 | Presentación del proyecto |  | 1d | 2024-09-03 A | 2024-09-03 A | 7 | 100% |  | 2024-09-03 | 2024-09-03 | 1d | start no earlier than 2024-09-03 | Julio Navarro | 8h | 8h | 48,000 | 48,000 | 48,000 |
| 9 | 1.3 | **Fase 2 Desarrollo del Proyect** |  | 81.5d | 2024-09-03 A | 2024-11-19 A | 8 | 100% |  | 2024-09-03 | 2024-11-19 | 81.5d |  |  | 1108h | 1108h | 8,631,000 | 7,824,000 | 8,631,000 |
| 10 | 1.3.1 | **Planificación y Análisis** |  | 6.5d | 2024-09-03 A | 2024-09-10 A |  | 100% |  | 2024-09-03 | 2024-09-10 | 6.5d |  |  | 80h | 80h | 552,000 | 552,000 | 552,000 |
| 11 | 1.3.1.1 | Toma de Requerimientos |  | 3d | 2024-09-03 A | 2024-09-06 A | 8 | 100% |  | 2024-09-03 | 2024-09-06 | 3d |  | Julio Navarro | 24h | 24h | 144,000 | 144,000 | 144,000 |
| 12 | 1.3.1.2 | Definir Roles y Permisos |  | 3d | 2024-09-06 A | 2024-09-09 A | 11 | 100% |  | 2024-09-06 | 2024-09-09 | 3d |  | Julio Navarro | 24h | 24h | 144,000 | 144,000 | 144,000 |
| 13 | 1.3.1.3 | Plainificacion Desarrollo |  | 3d | 2024-09-06 A | 2024-09-09 A | 11 | 100% |  | 2024-09-06 | 2024-09-09 | 3d |  | Cristopher Flores; Luis Navarrete | 32h | 32h | 264,000 | 264,000 | 264,000 |
| 14 | 1.3.1.4 | Reunion | milestone, manual | 0d | 2024-09-09 A | 2024-09-09 A |  | 100% |  | 2024-09-09 | 2024-09-09 | 0d | start no earlier than 2024-09-07 |  |  |  |  |  |  |
| 15 | 1.3.1.5 | Entrega | milestone | 0d | 2024-09-10 A | 2024-09-10 A | 12, 13 | 100% |  | 2024-09-10 | 2024-09-10 | 0d | start no earlier than 2024-09-10 |  |  |  |  |  |  |
| 16 | 1.3.2 | **Diseño del sistema** |  | 16.12d | 2024-09-10 A | 2024-09-24 A |  | 100% |  | 2024-09-10 | 2024-09-23 | 14d |  |  | 329h | 329h | 2,473,000 | 2,032,000 | 2,473,000 |
| 17 | 1.3.2.1 | Modelo de Datos |  | 16.12d | 2024-09-10 A | 2024-09-24 A | 15 | 100% |  | 2024-09-10 | 2024-09-18 | 10d |  | Luis Navarrete | 129h | 129h | 1,161,000 | 720,000 | 1,161,000 |
| 18 | 1.3.2.2 | Arquitectura del Sistema |  | 7d | 2024-09-10 A | 2024-09-16 A | 15 | 100% |  | 2024-09-10 | 2024-09-16 | 7d |  | Cristopher Flores | 56h | 56h | 448,000 | 448,000 | 448,000 |
| 19 | 1.3.2.3 | Interfaz de usuario |  | 7d | 2024-09-10 A | 2024-09-16 A | 15 | 100% |  | 2024-09-10 | 2024-09-16 | 7d |  | Julio Navarro | 56h | 56h | 336,000 | 336,000 | 336,000 |
| 20 | 1.3.2.4 | Acta de constitucion del proyecto |  | 2d | 2024-09-16 A | 2024-09-18 A | 17 | 100% |  | 2024-09-16 | 2024-09-18 | 2d |  | Julio Navarro | 16h | 16h | 96,000 | 96,000 | 96,000 |
| 21 | 1.3.2.5 | Foda |  | 2d | 2024-09-18 A | 2024-09-19 A | 20 | 100% |  | 2024-09-18 | 2024-09-19 | 2d |  | Julio Navarro | 16h | 16h | 96,000 | 96,000 | 96,000 |
| 22 | 1.3.2.6 | Historia de usuario y epica |  | 7d | 2024-09-16 A | 2024-09-23 A | 19 | 100% |  | 2024-09-16 | 2024-09-23 | 7d |  | Julio Navarro | 56h | 56h | 336,000 | 336,000 | 336,000 |
| 23 | 1.3.2.7 | Reunion | milestone, manual | 0d | 2024-09-14 A | 2024-09-14 A |  | 100% |  | 2024-09-14 | 2024-09-14 | 0d | start no earlier than 2024-09-14 |  |  |  |  |  |  |
| 24 | 1.3.2.8 | Entrega | milestone, manual | 0d | 2024-09-16 A | 2024-09-16 A | 17, 18, 19 | 100% |  | 2024-09-16 | 2024-09-16 | 0d |  |  |  |  |  |  |  |

| ID | WBS | Task | Type | Duration | Start | Finish | Predecessors | Complete | Baseline start | Baseline finish | Baseline duration | Constraint | Resources | Work | Actual work | Cost | Baseline cost | Actual cost |
| --- | --- | --- | --- | --- | --- | --- | --- | --- | --- | --- | --- | --- | --- | --- | --- | --- | --- | --- |
| 25 | 1.3.3 | **Desarrollo** |  | 64.25d | 2024-09-16 A | 2024-11-14 A | 24 | 100% | 2024-09-16 | 2024-11-12 | 60.5d |  |  | 643h | 643h | 5,238,000 | 4,872,000 | 5,238,000 |
| 26 | 1.3.3.1 | Configuracion entorno de Servidor |  | 2d | 2024-09-16 A | 2024-09-18 A | 24 | 100% | 2024-09-16 | 2024-09-18 | 2d |  | Cristopher Flores | 16h | 16h | 128,000 | 128,000 | 128,000 |
| 27 | 1.3.3.2 | Autenticación y Autorización |  | 5d | 2024-09-18 A | 2024-09-23 A | 26 | 100% | 2024-09-18 | 2024-09-23 | 5d |  | Cristopher Flores | 40h | 40h | 320,000 | 320,000 | 320,000 |
| 28 | 1.3.3.3 | Reunion | milestone, manual | 0d | 2024-09-21 A | 2024-09-21 A |  | 100% | 2024-09-21 | 2024-09-21 | 0d | start no earlier than 2024-09-21 |  |  |  |  |  |  |
| 29 | 1.3.3.4 | Entrega | milestone, manual | 0d | 2024-09-23 A | 2024-09-23 A | 27 | 100% | 2024-09-23 | 2024-09-23 | 0d |  |  |  |  |  |  |  |
| 30 | 1.3.3.5 | Implementación Autenticación |  | 7d | 2024-09-23 A | 2024-09-30 A | 29 | 100% | 2024-09-23 | 2024-09-30 | 7d |  | Cristopher Flores | 56h | 56h | 448,000 | 448,000 | 448,000 |
| 31 | 1.3.3.6 | Soporte de Roles , Gestion de Permisos y usuario |  | 7d | 2024-09-23 A | 2024-09-30 A | 29 | 100% | 2024-09-23 | 2024-09-30 | 7d |  | Luis Navarrete | 56h | 56h | 504,000 | 504,000 | 504,000 |
| 32 | 1.3.3.7 | Reunion | milestone, manual | 0d | 2024-09-28 A | 2024-09-28 A |  | 100% | 2024-09-28 | 2024-09-28 | 0d |  |  |  |  |  |  |  |
| 33 | 1.3.3.8 | Entrega | milestone, manual | 0d | 2024-10-01 A | 2024-10-01 A | 30, 31 | 100% | 2024-10-01 | 2024-10-01 | 0d |  |  |  |  |  |  |  |
| 34 | 1.3.3.9 | Implementacion roles, permisos y usuario |  | 4.88d | 2024-10-01 A | 2024-10-04 A | 33 | 100% | 2024-10-01 | 2024-10-07 | 7d |  | Julio Navarro | 39h | 39h | 234,000 | 336,000 | 234,000 |
| 35 | 1.3.3.10 | Reunion | milestone, manual | 0d | 2024-10-06 A | 2024-10-06 A |  | 100% | 2024-10-06 | 2024-10-06 | 0d |  |  |  |  |  |  |  |
| 36 | 1.3.3.11 | Entrega | milestone, manual | 0d | 2024-10-08 A | 2024-10-08 A | 34 | 100% | 2024-10-08 | 2024-10-08 | 0d |  |  |  |  |  |  |  |
| 37 | 1.3.3.12 | APIs Rest para la gestión de Inventario |  | 23.62d | 2024-10-08 A | 2024-10-29 A | 36 | 100% | 2024-10-08 | 2024-10-21 | 15d |  | Luis Navarrete | 189h | 189h | 1,701,000 | 1,080,000 | 1,701,000 |
| 38 | 1.3.3.13 | Reunion | milestone, manual | 0d | 2024-10-12 A | 2024-10-12 A |  | 100% | 2024-10-12 | 2024-10-12 | 0d | start no earlier than 2024-10-12 |  |  |  |  |  |  |
| 39 | 1.3.3.14 | Implementacion Inventario |  | 12d | 2024-10-14 A | 2024-10-24 A |  | 100% | 2024-10-14 | 2024-10-24 | 12d | start no earlier than 2024-10-14 | Cristopher Flores | 96h | 96h | 768,000 | 768,000 | 768,000 |
| 40 | 1.3.3.15 | Reunion | milestone | 0d | 2024-10-19 A | 2024-10-19 A |  | 100% | 2024-10-19 | 2024-10-19 | 0d | start no earlier than 2024-10-19 |  |  |  |  |  |  |
| 41 | 1.3.3.16 | Entrega | milestone | 0d | 2024-10-22 A | 2024-10-22 A | 37, 39 | 100% | 2024-10-22 | 2024-10-22 | 0d | start no earlier than 2024-10-22 |  |  |  |  |  |  |
| 42 | 1.3.3.17 | Alertas y Notificaciones |  | 4.88d | 2024-10-22 A | 2024-10-25 A | 41 | 100% | 2024-10-22 | 2024-10-28 | 7d |  | Luis Navarrete | 39h | 39h | 351,000 | 504,000 | 351,000 |
| 43 | 1.3.3.18 | Reunion | milestone | 0d | 2024-10-26 A | 2024-10-26 A |  | 100% | 2024-10-26 | 2024-10-26 | 0d | start no earlier than 2024-10-26 |  |  |  |  |  |  |
| 44 | 1.3.3.19 | Entrega | milestone | 0d | 2024-10-29 A | 2024-10-29 A | 42 | 100% | 2024-10-29 | 2024-10-29 | 0d | start no earlier than 2024-10-29 |  |  |  |  |  |  |
| 45 | 1.3.3.20 | Panel de Administrativo |  | 7d | 2024-10-29 A | 2024-11-04 A | 44 | 100% | 2024-10-29 | 2024-11-04 | 7d |  | Cristopher Flores | 56h | 56h | 448,000 | 448,000 | 448,000 |
| 46 | 1.3.3.21 | Reunion | milestone | 0d | 2024-11-02 A | 2024-11-02 A |  | 100% | 2024-11-02 | 2024-11-02 | 0d | start no earlier than 2024-11-02 |  |  |  |  |  |  |
| 47 | 1.3.3.22 | Entrega | milestone | 0d | 2024-11-05 A | 2024-11-05 A | 45 | 100% | 2024-11-05 | 2024-11-05 | 0d | start no earlier than 2024-11-05 |  |  |  |  |  |  |
| 48 | 1.3.3.23 | Tareas finales |  | 7d | 2024-11-05 A | 2024-11-11 A | 47 | 100% | 2024-11-05 | 2024-11-11 | 7d |  | Julio Navarro | 56h | 56h | 336,000 | 336,000 | 336,000 |
| 49 | 1.3.3.24 | Reunion | milestone | 0d | 2024-11-09 A | 2024-11-14 A |  | 100% | 2024-11-09 | 2024-11-09 | 0d | start no earlier than 2024-11-09 |  |  |  |  |  |  |
| 50 | 1.3.3.25 | Entrega | milestone | 0d | 2024-11-12 A | 2024-11-12 A | 48 | 100% | 2024-11-12 | 2024-11-12 | 0d | start no earlier than 2024-11-12 |  |  |  |  |  |  |

| ID | WBS | Task | Type | Duration | Start | Finish | Predecessors | Complete | Actual start | Actual finish | Baseline start | Baseline finish | Baseline duration | Constraint | Resources | Work | Actual work | Cost | Baseline cost | Actual cost |
| --- | --- | --- | --- | --- | --- | --- | --- | --- | --- | --- | --- | --- | --- | --- | --- | --- | --- | --- | --- | --- |
| 51 | 1.3.4 | **Despliegue y Mantenimiento** |  | 4d | 2024-11-12 A | 2024-11-15 A | 50 | 100% |  |  | 2024-11-12 | 2024-11-15 | 4d |  |  | 32h | 32h | 224,000 | 224,000 | 224,000 |
| 52 | 1.3.4.1 | Preparación para el despliegue |  | 2d | 2024-11-12 A | 2024-11-13 A | 50 | 100% |  |  | 2024-11-12 | 2024-11-13 | 2d |  | Julio Navarro | 16h | 16h | 96,000 | 96,000 | 96,000 |
| 53 | 1.3.4.2 | Despliegue a produción |  | 2d | 2024-11-13 A | 2024-11-15 A | 52 | 100% |  |  | 2024-11-13 | 2024-11-15 | 2d |  | Cristopher Flores | 16h | 16h | 128,000 | 128,000 | 128,000 |
| 54 | 1.3.5 | **Documentación** |  | 3.5d | 2024-11-15 A | 2024-11-19 A | 53 | 100% |  |  | 2024-11-15 | 2024-11-19 | 3.5d |  |  | 24h | 24h | 144,000 | 144,000 | 144,000 |
| 55 | 1.3.5.1 | Documentacion de usuario |  | 3d | 2024-11-15 A | 2024-11-18 A | 53 | 100% |  |  | 2024-11-15 | 2024-11-18 | 3d |  | Julio Navarro | 24h | 24h | 144,000 | 144,000 | 144,000 |
| 56 | 1.3.5.2 | Reunion | milestone | 0d | 2024-11-16 A | 2024-11-16 A |  | 100% |  |  | 2024-11-16 | 2024-11-16 | 0d | start no earlier than 2024-11-16 |  |  |  |  |  |  |
| 57 | 1.3.5.3 | Entrega | milestone | 0d | 2024-11-19 A | 2024-11-19 A | 55 | 100% |  |  | 2024-11-19 | 2024-11-19 | 0d | start no earlier than 2024-11-19 |  |  |  |  |  |  |
| 58 | 1.4 | **Fase 3 Presentación del proyecto** |  | 19.88d | 2024-11-25 | 2024-12-12 |  | 100% | 2024-12-03 | 2024-12-03 | 2024-11-25 | 2024-12-12 | 19.88d |  |  |  |  |  |  |  |
| 59 | 1.4.1 | Fin | milestone | 0d | 2024-12-03 A | 2024-12-03 A | 57 | 100% |  |  | 2024-12-03 | 2024-12-03 | 0d | start no earlier than 2024-12-03 |  |  |  |  |  |  |
